# GPI-G20

Schedule from MS Project, 2022-05-13 to 2022-12-02, status date 2022-06-29, costs in €, A marks actual dates.
BIER
Desenvolver um sistema de auditoria interna capaz de solucionar limitações de conformidade e de funcionalidade

## Calendars

- Calendário do projeto_1: Mon-Fri 08:00-12:00, 13:00-17:00; Sat-Sun off. Exceptions (off unless hours are given): 2022-06-10 (Dia de Portugal), 2022-06-13 (Santo António), 2022-06-16 (Corpo de Deus), 2022-08-04 to 2022-08-14 (Férias), 2022-08-15 (Assunção de Nossa Senhora), 2022-10-05 (Implementação da República), 2022-11-01 (Dia de todos os santos), 2022-12-01 (Restauração da República).

## Resources

| Resource | Rate |
| --- | --- |
| Head of Audit Department (P.S.) |  |
| Alex (P.S.) | 43.75 |
| Joe (P.M.) |  |
| IT coordinator (T.L.) |  |
| Junior Programmer (T.M.) |  |
| Infrastrutures Specialist (T.M.) |  |
| H.R. Specialist (T.L.) |  |
| Chief Auditor (T.L.) |  |
| Auditor1 (K.U.) |  |
| Auditor2 (K.U.) |  |
| Auditor3 (K.U.) |  |
| Auditor4 (K.U.) |  |
| Auditor5 (K.U.) |  |
| Miguel (P.M.) | 37.5 |
| Senior Internal Audit Consultant (T.L.) | 31.25 |
| Consultant1 (T.M.) | 18.75 |
| Consultant2 (T.M.) | 18.75 |
| Scrum Master (T.L.) | 31.25 |
| Consultant3 (T.M.) | 18.75 |
| Consultant4 (T.M.) | 18.75 |

## Schedule

| ID | WBS | Task | Type | Duration | Start | Finish | Predecessors | Complete | Remaining | Baseline start | Baseline finish | Baseline duration | Total slack | Constraint | Resources | Work | Actual work | Cost | Baseline cost | Actual cost |
| --- | --- | --- | --- | --- | --- | --- | --- | --- | --- | --- | --- | --- | --- | --- | --- | --- | --- | --- | --- | --- |
| 1 | 1 | **Internal Audit Management Project (IAM)** |  | 132d | 2022-05-13 A | 2022-12-02 |  | 19% | 106.55d | 2022-05-02 | 2022-10-27 | 124d | 0d |  |  | 2817.36h | 474.56h | 77,075 | 74,675 | 14,527.5 |
| 2 | 1.1 | **Gestão do Projeto** |  | 132d | 2022-05-13 A | 2022-12-02 |  | 49% | 67.89d | 2022-05-02 | 2022-10-27 | 124d | 0d |  |  | 241.6h | 123.2h | 8,700 | 8,700 | 4,550 |
| 3 | 1.1.1 | **Iniciação** |  | 3d | 2022-05-16 A | 2022-05-18 A |  | 100% |  | 2022-05-02 | 2022-05-04 | 3d |  |  |  | 32h | 32h | 1,250 | 1,250 | 1,250 |
| 4 | 1.1.1.1 | Rever Project Charter |  | 1d | 2022-05-16 A | 2022-05-16 A |  | 100% |  | 2022-05-02 | 2022-05-02 | 1d |  |  | Miguel (P.M.); Alex (P.S.) | 16h | 16h | 650 | 650 | 650 |
| 5 | 1.1.1.2 | Estabelecer a equipa do proj |  | 2d | 2022-05-17 A | 2022-05-18 A | 4 | 100% |  | 2022-05-03 | 2022-05-04 | 2d |  |  | Miguel (P.M.) | 16h | 16h | 600 | 600 | 600 |
| 6 | 1.1.1.3 | Proj iniciado | milestone | 0d | 2022-05-18 A | 2022-05-18 A | 5 | 100% |  | 2022-05-04 | 2022-05-04 | 0d |  |  |  |  |  |  |  |  |
| 7 | 1.1.2 | **Planeamento** |  | 10d | 2022-05-19 A | 2022-06-02 A |  | 100% |  | 2022-05-05 | 2022-05-13 | 7d |  |  |  | 91.2h | 91.2h | 3,300 | 3,300 | 3,300 |
| 8 | 1.1.2.1 | Rever prazos e scope do proj |  | 1d | 2022-05-19 A | 2022-05-19 A | 6 | 100% |  | 2022-05-05 | 2022-05-05 | 1d |  |  | Miguel (P.M.); Scrum Master (T.L.) [10%]; Senior Internal Audit Consultant (T.L.) [10%] | 9.6h | 9.6h | 350 | 350 | 350 |
| 9 | 1.1.2.2 | Rever recursos atribuidos |  | 1d | 2022-05-20 A | 2022-05-20 A | 8 | 100% |  | 2022-05-06 | 2022-05-06 | 1d |  |  | Miguel (P.M.); Scrum Master (T.L.) [10%]; Senior Internal Audit Consultant (T.L.) [10%] | 9.6h | 9.6h | 350 | 350 | 350 |
| 10 | 1.1.2.3 | Identificar e avaliar riscos |  | 1d | 2022-05-23 A | 2022-05-23 A | 9 | 100% |  | 2022-05-09 | 2022-05-09 | 1d |  |  | Miguel (P.M.); Scrum Master (T.L.) [10%]; Senior Internal Audit Consultant (T.L.) [10%] | 9.6h | 9.6h | 350 | 350 | 350 |
| 11 | 1.1.2.4 | Definir organização do proj |  | 1d | 2022-05-24 A | 2022-05-24 A | 10 | 100% |  | 2022-05-10 | 2022-05-10 | 1d |  |  | Miguel (P.M.); Scrum Master (T.L.) [10%]; Senior Internal Audit Consultant (T.L.) [10%] | 9.6h | 9.6h | 350 | 350 | 350 |
| 12 | 1.1.2.5 | Definir plano de comunicação |  | 1d | 2022-05-25 A | 2022-05-25 A | 11 | 100% |  | 2022-05-11 | 2022-05-11 | 1d |  |  | Miguel (P.M.); Scrum Master (T.L.) [20%]; Senior Internal Audit Consultant (T.L.) [20%] | 11.2h | 11.2h | 400 | 400 | 400 |
| 13 | 1.1.2.6 | Rever o plano do proj |  | 1d | 2022-05-26 A | 2022-05-26 A | 12 | 100% |  | 2022-05-12 | 2022-05-12 | 1d |  |  | Miguel (P.M.); Scrum Master (T.L.) [10%]; Senior Internal Audit Consultant (T.L.) [10%] | 9.6h | 9.6h | 350 | 350 | 350 |
| 14 | 1.1.2.7 | Kick-off meeting |  | 1d | 2022-05-27 A | 2022-05-27 A | 13 | 100% |  | 2022-05-13 | 2022-05-13 | 1d |  |  | Miguel (P.M.); Scrum Master (T.L.); Senior Internal Audit Consultant (T.L.); Alex (P.S.) | 32h | 32h | 1,150 | 1,150 | 1,150 |
| 15 | 1.1.2.8 | Plano do proj aprovado | milestone | 0d | 2022-06-02 A | 2022-06-02 A | 14 | 100% |  | 2022-05-13 | 2022-05-13 | 0d |  |  |  |  |  |  |  |  |
| 16 | 1.1.3 | **Controlo** |  | 75d | 2022-05-13 A | 2022-09-09 |  | 39% | 45.83d | 2022-05-13 | 2022-09-09 | 82d | 57d |  |  |  |  |  |  |  |
| 17 | 1.1.3.1 | **Reunião** |  | 75d | 2022-05-13 A | 2022-09-09 |  | 39% | 45.83d | 2022-05-13 | 2022-09-09 | 82d | 57d |  |  |  |  |  |  |  |
| 18 | 1.1.3.1.1 | Reunião 1 |  | 1d | 2022-05-13 A | 2022-05-13 A |  | 100% |  | 2022-05-13 | 2022-05-13 | 1d |  | start no earlier than 2022-05-13 | Miguel (P.M.); Scrum Master (T.L.); Senior Internal Audit Consultant (T.L.) |  |  |  |  |  |
| 19 | 1.1.3.1.2 | Reunião 2 |  | 1d | 2022-05-20 A | 2022-05-20 A |  | 100% |  | 2022-05-20 | 2022-05-20 | 1d |  | start no earlier than 2022-05-20 | Miguel (P.M.); Scrum Master (T.L.); Senior Internal Audit Consultant (T.L.) |  |  |  |  |  |
| 20 | 1.1.3.1.3 | Reunião 3 |  | 1d | 2022-05-27 A | 2022-05-27 A |  | 100% |  | 2022-05-27 | 2022-05-27 | 1d |  | start no earlier than 2022-05-27 | Miguel (P.M.); Scrum Master (T.L.); Senior Internal Audit Consultant (T.L.) |  |  |  |  |  |
| 21 | 1.1.3.1.4 | Reunião 4 |  | 1d | 2022-06-03 A | 2022-06-03 A |  | 100% |  | 2022-06-03 | 2022-06-03 | 1d |  | start no earlier than 2022-06-03 | Miguel (P.M.); Scrum Master (T.L.); Senior Internal Audit Consultant (T.L.) |  |  |  |  |  |
| 22 | 1.1.3.1.5 | Reunião 5 |  | 1d | 2022-06-10 A | 2022-06-14 A |  | 100% |  | 2022-06-10 | 2022-06-14 | 1d |  | start no earlier than 2022-06-10 | Miguel (P.M.); Scrum Master (T.L.); Senior Internal Audit Consultant (T.L.) |  |  |  |  |  |
| 23 | 1.1.3.1.6 | Reunião 6 |  | 1d | 2022-06-17 A | 2022-06-17 A |  | 100% |  | 2022-06-17 | 2022-06-17 | 1d |  | start no earlier than 2022-06-17 | Miguel (P.M.); Scrum Master (T.L.); Senior Internal Audit Consultant (T.L.) |  |  |  |  |  |
| 24 | 1.1.3.1.7 | Reunião 7 |  | 1d | 2022-06-24 A | 2022-06-24 A |  | 100% |  | 2022-06-24 | 2022-06-24 | 1d |  | start no earlier than 2022-06-24 | Miguel (P.M.); Scrum Master (T.L.); Senior Internal Audit Consultant (T.L.) |  |  |  |  |  |
| 25 | 1.1.3.1.8 | Reunião 8 |  | 1d | 2022-07-01 | 2022-07-01 |  |  |  | 2022-07-01 | 2022-07-01 | 1d | 99d | start no earlier than 2022-07-01 | Miguel (P.M.); Scrum Master (T.L.); Senior Internal Audit Consultant (T.L.) |  |  |  |  |  |
| 26 | 1.1.3.1.9 | Reunião 9 |  | 1d | 2022-07-08 | 2022-07-08 |  |  |  | 2022-07-08 | 2022-07-08 | 1d | 94d | start no earlier than 2022-07-08 | Miguel (P.M.); Scrum Master (T.L.); Senior Internal Audit Consultant (T.L.) |  |  |  |  |  |
| 27 | 1.1.3.1.10 | Reunião 10 |  | 1d | 2022-07-15 | 2022-07-15 |  |  |  | 2022-07-15 | 2022-07-15 | 1d | 89d | start no earlier than 2022-07-15 | Miguel (P.M.); Scrum Master (T.L.); Senior Internal Audit Consultant (T.L.) |  |  |  |  |  |
| 28 | 1.1.3.1.11 | Reunião 11 |  | 1d | 2022-07-22 | 2022-07-22 |  |  |  | 2022-07-22 | 2022-07-22 | 1d | 84d | start no earlier than 2022-07-22 | Miguel (P.M.); Scrum Master (T.L.); Senior Internal Audit Consultant (T.L.) |  |  |  |  |  |
| 29 | 1.1.3.1.12 | Reunião 12 |  | 1d | 2022-07-29 | 2022-07-29 |  |  |  | 2022-07-29 | 2022-07-29 | 1d | 79d | start no earlier than 2022-07-29 | Miguel (P.M.); Scrum Master (T.L.); Senior Internal Audit Consultant (T.L.) |  |  |  |  |  |
| 30 | 1.1.3.1.13 | Reunião 13 |  | 1d | 2022-08-05 | 2022-08-16 |  |  |  | 2022-08-05 | 2022-08-05 | 1d | 75d | start no earlier than 2022-08-05 | Miguel (P.M.); Scrum Master (T.L.); Senior Internal Audit Consultant (T.L.) |  |  |  |  |  |
| 31 | 1.1.3.1.14 | Reunião 14 |  | 1d | 2022-08-12 | 2022-08-16 |  |  |  | 2022-08-12 | 2022-08-12 | 1d | 75d | start no earlier than 2022-08-12 | Miguel (P.M.); Scrum Master (T.L.); Senior Internal Audit Consultant (T.L.) |  |  |  |  |  |
| 32 | 1.1.3.1.15 | Reunião 15 |  | 1d | 2022-08-19 | 2022-08-19 |  |  |  | 2022-08-19 | 2022-08-19 | 1d | 72d | start no earlier than 2022-08-19 | Miguel (P.M.); Scrum Master (T.L.); Senior Internal Audit Consultant (T.L.) |  |  |  |  |  |
| 33 | 1.1.3.1.16 | Reunião 16 |  | 1d | 2022-08-26 | 2022-08-26 |  |  |  | 2022-08-26 | 2022-08-26 | 1d | 67d | start no earlier than 2022-08-26 | Miguel (P.M.); Scrum Master (T.L.); Senior Internal Audit Consultant (T.L.) |  |  |  |  |  |
| 34 | 1.1.3.1.17 | Reunião 17 |  | 1d | 2022-09-02 | 2022-09-02 |  |  |  | 2022-09-02 | 2022-09-02 | 1d | 62d | start no earlier than 2022-09-02 | Miguel (P.M.); Scrum Master (T.L.); Senior Internal Audit Consultant (T.L.) |  |  |  |  |  |
| 35 | 1.1.3.1.18 | Reunião 18 |  | 1d | 2022-09-09 | 2022-09-09 |  |  |  | 2022-09-09 | 2022-09-09 | 1d | 57d | start no earlier than 2022-09-09 | Miguel (P.M.); Scrum Master (T.L.); Senior Internal Audit Consultant (T.L.) |  |  |  |  |  |

| ID | WBS | Task | Type | Duration | Start | Finish | Predecessors | Complete | Remaining | Baseline start | Baseline finish | Baseline duration | Total slack | Resources | Work | Actual work | Cost | Baseline cost | Actual cost |
| --- | --- | --- | --- | --- | --- | --- | --- | --- | --- | --- | --- | --- | --- | --- | --- | --- | --- | --- | --- |
| 36 | 1.1.4 | **Fecho** |  | 7d | 2022-11-23 | 2022-12-02 |  |  |  | 2022-10-19 | 2022-10-27 | 7d | 0d |  | 118.4h |  | 4,150 | 4,150 |  |
| 37 | 1.1.4.1 | Rever os objetivos do proj |  | 2d | 2022-11-23 | 2022-11-24 | 133 |  |  | 2022-10-19 | 2022-10-20 | 2d | 0d | Miguel (P.M.); Scrum Master (T.L.) [20%]; Senior Internal Audit Consultant (T.L.) [20%] | 22.4h |  | 800 | 800 |  |
| 38 | 1.1.4.2 | Entregar os deliverables |  | 1d | 2022-11-25 | 2022-11-25 | 37 |  |  | 2022-10-21 | 2022-10-21 | 1d | 0d | Miguel (P.M.); Scrum Master (T.L.); Senior Internal Audit Consultant (T.L.) | 24h |  | 800 | 800 |  |
| 39 | 1.1.4.3 | Completar os contratos |  | 1d | 2022-11-28 | 2022-11-28 | 38 |  |  | 2022-10-24 | 2022-10-24 | 1d | 0d | Alex (P.S.); Miguel (P.M.) | 16h |  | 650 | 650 |  |
| 40 | 1.1.4.4 | Registar lições aprendidas |  | 1d | 2022-11-29 | 2022-11-29 | 39 |  |  | 2022-10-25 | 2022-10-25 | 1d | 0d | Miguel (P.M.); Scrum Master (T.L.); Senior Internal Audit Consultant (T.L.) | 24h |  | 800 | 800 |  |
| 41 | 1.1.4.5 | Fornecer feedback |  | 1d | 2022-11-30 | 2022-11-30 | 40 |  |  | 2022-10-26 | 2022-10-26 | 1d | 0d | Miguel (P.M.); Scrum Master (T.L.); Senior Internal Audit Consultant (T.L.) | 24h |  | 800 | 800 |  |
| 42 | 1.1.4.6 | Libertar equipa |  | 1d | 2022-12-02 | 2022-12-02 | 41 |  |  | 2022-10-27 | 2022-10-27 | 1d | 0d | Miguel (P.M.) | 8h |  | 300 | 300 |  |
| 43 | 1.1.4.7 | Projeto encerrado | milestone | 0d | 2022-12-02 | 2022-12-02 | 42 |  |  | 2022-10-27 | 2022-10-27 | 0d | 0d |  |  |  |  |  |  |
| 44 | 1.2 | **Análise e design** |  | 31d | 2022-06-03 A | 2022-07-20 |  | 53% | 14.71d | 2022-05-16 | 2022-06-27 | 28d | 0d |  | 736.96h | 351.36h | 21,352.5 | 18,952.5 | 9,977.5 |
| 45 | 1.2.1 | **Análise da situação** |  | 4d | 2022-06-03 A | 2022-06-08 A |  | 100% |  | 2022-05-16 | 2022-05-19 | 4d |  |  | 95.76h | 95.76h | 2,192.5 | 2,192.5 | 2,192.5 |
| 46 | 1.2.1.1 | Analisar o sistema antigo |  | 3d | 2022-06-03 A | 2022-06-07 A |  | 100% |  | 2022-05-16 | 2022-05-18 | 3d |  | Consultant1 (T.M.) [50%]; Consultant2 (T.M.) [50%]; Senior Internal Audit Consultant (T.L.) [33%] | 31.92h | 31.92h | 697.5 | 697.5 | 697.5 |
| 47 | 1.2.1.2 | Recolher as possíveis melhorias nas features do sistema antigo |  | 1d | 2022-06-08 A | 2022-06-08 A | 46 | 100% |  | 2022-05-19 | 2022-05-19 | 1d |  | Consultant1 (T.M.); Consultant2 (T.M.); Senior Internal Audit Consultant (T.L.) | 24h | 24h | 550 | 550 | 550 |
| 48 | 1.2.1.3 | Analisar a framework existente |  | 3d | 2022-06-03 A | 2022-06-07 A | 15 | 100% |  | 2022-05-16 | 2022-05-18 | 3d |  | Consultant1 (T.M.) [50%]; Consultant2 (T.M.) [50%]; Senior Internal Audit Consultant (T.L.) [33%] | 31.92h | 31.92h | 697.5 | 697.5 | 697.5 |
| 49 | 1.2.1.4 | Analisar o sistema dos R.H. |  | 3d | 2022-06-03 A | 2022-06-07 A | 15 | 100% |  | 2022-05-16 | 2022-05-18 | 3d |  | Senior Internal Audit Consultant (T.L.) [33%] | 7.92h | 7.92h | 247.5 | 247.5 | 247.5 |
| 50 | 1.2.1.5 | Análise da situação do sistema concluída | milestone | 0d | 2022-06-08 A | 2022-06-08 A | 49, 47, 48 | 100% |  | 2022-05-19 | 2022-05-19 | 0d |  |  |  |  |  |  |  |
| 51 | 1.2.2 | **Especificação de requisitos** |  | 9d | 2022-06-09 A | 2022-06-24 A |  | 100% |  | 2022-05-20 | 2022-05-27 | 6d |  |  | 183.6h | 183.6h | 5,385 | 2,985 | 5,385 |
| 52 | 1.2.2.1 | Requisitos do sistema |  | 4d | 2022-06-09 A | 2022-06-17 A | 50 | 100% |  | 2022-05-20 | 2022-05-25 | 4d |  | Miguel (P.M.) [33%]; Senior Internal Audit Consultant (T.L.) [10%]; Scrum Master (T.L.) [10%] | 16.96h | 16.96h | 596 | 596 | 596 |
| 53 | 1.2.2.2 | Requisitos funcionais e não funcionais |  | 6d | 2022-06-09 A | 2022-06-21 A | 52SS | 100% |  | 2022-05-20 | 2022-05-27 | 6d |  | Miguel (P.M.) [33%]; Senior Internal Audit Consultant (T.L.) [10%]; Scrum Master (T.L.) [10%] | 25.44h | 25.44h | 894 | 894 | 894 |
| 54 | 1.2.2.3 | Requisitos da formação |  | 5d | 2022-06-09 A | 2022-06-20 A | 52SS | 100% |  | 2022-05-20 | 2022-05-26 | 5d |  | Senior Internal Audit Consultant (T.L.) [80%]; Miguel (P.M.) [33%] | 45.2h | 45.2h | 1,495 | 1,495 | 1,495 |
| 55 | 1.2.2.4 | Rever requisitos |  | 3d | 2022-06-22 A | 2022-06-24 A | 53, 54, 52 | 100% |  |  |  |  |  | Consultant1 (T.M.); Consultant2 (T.M.); Scrum Master (T.L.); Senior Internal Audit Consultant (T.L.) | 96h | 96h | 2,400 |  | 2,400 |
| 56 | 1.2.2.5 | Especificação de requisitos concluído | milestone | 0d | 2022-06-24 A | 2022-06-24 A | 55 | 100% |  | 2022-05-27 | 2022-05-27 | 0d |  |  |  |  |  |  |  |
| 57 | 1.2.3 | **Especificação das infraestruturas** |  | 4d | 2022-06-27 A | 2022-06-30 |  | 75% | 1d | 2022-05-30 | 2022-06-02 | 4d | 0d |  | 88h | 72h | 2,950 | 2,950 | 2,400 |
| 58 | 1.2.3.1 | Requisitos das infraestruturas |  | 1d | 2022-06-27 A | 2022-06-27 A | 56 | 100% |  | 2022-05-30 | 2022-05-30 | 1d |  | Miguel (P.M.); Senior Internal Audit Consultant (T.L.); Scrum Master (T.L.) | 24h | 24h | 800 | 800 | 800 |
| 59 | 1.2.3.2 | Restrições das infraestruturas |  | 2d | 2022-06-28 A | 2022-06-29 A | 58 | 100% |  | 2022-05-31 | 2022-06-01 | 2d |  | Miguel (P.M.); Senior Internal Audit Consultant (T.L.); Scrum Master (T.L.) | 48h | 48h | 1,600 | 1,600 | 1,600 |
| 60 | 1.2.3.3 | Escolher a cloud provider |  | 1d | 2022-06-30 | 2022-06-30 | 59 |  |  | 2022-06-02 | 2022-06-02 | 1d | 0d | Miguel (P.M.); Senior Internal Audit Consultant (T.L.) | 16h |  | 550 | 550 |  |
| 61 | 1.2.3.4 | Especificação das infraestruturas concluída | milestone | 0d | 2022-06-30 | 2022-06-30 | 60 |  |  | 2022-06-02 | 2022-06-02 | 0d | 0d |  |  |  |  |  |  |

| ID | WBS | Task | Type | Duration | Start | Finish | Predecessors | Baseline start | Baseline finish | Baseline duration | Total slack | Free slack | Resources | Work | Cost | Baseline cost |
| --- | --- | --- | --- | --- | --- | --- | --- | --- | --- | --- | --- | --- | --- | --- | --- | --- |
| 62 | 1.2.4 | **HR Integration Design** |  | 10d | 2022-07-01 | 2022-07-14 |  | 2022-06-03 | 2022-06-21 | 10d | 0d |  |  | 177.6h | 4,400 | 4,400 |
| 63 | 1.2.4.1 | Prova de conceitos |  | 6d | 2022-07-01 | 2022-07-08 | 61 | 2022-06-03 | 2022-06-14 | 6d | 0d |  | Senior Internal Audit Consultant (T.L.) [20%]; Consultant1 (T.M.) [50%]; Consultant2 (T.M.) [50%]; Miguel (P.M.) [50%] | 81.6h | 2,100 | 2,100 |
| 64 | 1.2.4.2 | API Design |  | 4d | 2022-07-11 | 2022-07-14 | 63 | 2022-06-15 | 2022-06-21 | 4d | 0d |  | Senior Internal Audit Consultant (T.L.) [50%]; Consultant1 (T.M.); Consultant2 (T.M.); Miguel (P.M.) [50%] | 96h | 2,300 | 2,300 |
| 65 | 1.2.4.3 | HR Integration Design concluido | milestone | 0d | 2022-07-14 | 2022-07-14 | 64 | 2022-06-21 | 2022-06-21 | 0d | 0d |  |  |  |  |  |
| 66 | 1.2.5 | **Data Migration Design** |  | 9d | 2022-07-01 | 2022-07-13 |  | 2022-06-03 | 2022-06-20 | 9d | 1d |  |  | 96h | 3,225 | 3,225 |
| 67 | 1.2.5.1 | Especificação de scripts de migração |  | 7d | 2022-07-01 | 2022-07-11 | 61 | 2022-06-03 | 2022-06-15 | 7d | 1d | 0d | Miguel (P.M.) [50%]; Senior Internal Audit Consultant (T.L.) [20%]; Scrum Master (T.L.) [50%] | 67.2h | 2,275 | 2,275 |
| 68 | 1.2.5.2 | Especificação de tecnologias |  | 2d | 2022-07-12 | 2022-07-13 | 67 | 2022-06-17 | 2022-06-20 | 2d | 1d | 0d | Miguel (P.M.) [50%]; Senior Internal Audit Consultant (T.L.) [30%]; Scrum Master (T.L.) | 28.8h | 950 | 950 |
| 69 | 1.2.5.3 | Data migration design concluida | milestone | 0d | 2022-07-13 | 2022-07-13 | 68 | 2022-06-20 | 2022-06-20 | 0d | 1d | 0d |  |  |  |  |
| 70 | 1.2.6 | **Especificação de testes** |  | 5d | 2022-07-14 | 2022-07-20 |  | 2022-06-21 | 2022-06-27 | 5d | 0d |  |  | 96h | 3,200 | 3,200 |
| 71 | 1.2.6.1 | Especificação de testes de scripts de migração |  | 4d | 2022-07-14 | 2022-07-19 | 69 | 2022-06-21 | 2022-06-24 | 4d | 1d |  | Miguel (P.M.) [50%]; Scrum Master (T.L.) [50%]; Senior Internal Audit Consultant (T.L.) [50%] | 48h | 1,600 | 1,600 |
| 72 | 1.2.6.2 | Especificação de testes de integração da API |  | 4d | 2022-07-15 | 2022-07-20 | 65 | 2022-06-22 | 2022-06-27 | 4d | 0d |  | Miguel (P.M.) [50%]; Scrum Master (T.L.) [50%]; Senior Internal Audit Consultant (T.L.) [50%] | 48h | 1,600 | 1,600 |
| 73 | 1.2.6.3 | Especificação de testes concluida | milestone | 0d | 2022-07-20 | 2022-07-20 | 72, 71 | 2022-06-27 | 2022-06-27 | 0d | 0d |  |  |  |  |  |
| 74 | 1.3 | **Implementação** |  | 31d | 2022-07-21 | 2022-09-13 |  | 2022-06-28 | 2022-08-09 | 31d | 0d |  |  | 773.2h | 17,767.5 | 17,767.5 |
| 75 | 1.3.1 | **Criação de scripts para migração de dados** |  | 11d | 2022-07-21 | 2022-08-16 |  | 2022-06-28 | 2022-07-12 | 11d | 20d |  |  | 53.6h | 1,430 | 1,430 |
| 76 | 1.3.1.1 | Criação de scripts para migração |  | 7d | 2022-07-21 | 2022-07-29 | 73 | 2022-06-28 | 2022-07-06 | 7d | 20d | 0d | Scrum Master (T.L.) [20%]; Miguel (P.M.) [10%]; Consultant4 (T.M.) [20%] | 28h | 770 | 770 |
| 77 | 1.3.1.2 | Testes dos scripts de migração |  | 4d | 2022-08-01 | 2022-08-16 | 76 | 2022-07-07 | 2022-07-12 | 4d | 20d | 0d | Consultant4 (T.M.) [20%]; Scrum Master (T.L.) [15%]; Miguel (P.M.) [10%] | 14.4h | 390 | 390 |
| 78 | 1.3.1.3 | Corrigir problemas encontrados |  | 4d | 2022-08-01 | 2022-08-16 | 77FF | 2022-07-07 | 2022-07-12 | 4d | 20d | 0d | Consultant4 (T.M.) [20%]; Scrum Master (T.L.) [15%] | 11.2h | 270 | 270 |
| 79 | 1.3.1.4 | Scripts para migração de dados concluídos | milestone | 0d | 2022-08-16 | 2022-08-16 | 78 | 2022-07-12 | 2022-07-12 | 0d | 20d |  |  |  |  |  |
| 80 | 1.3.2 | **Framework existente de Auditoria Interna** |  | 15d | 2022-07-21 | 2022-08-22 |  | 2022-06-28 | 2022-07-18 | 15d | 16d |  |  | 296h | 7,525 | 7,525 |
| 81 | 1.3.2.1 | Deploy para o ambiente de desenvolvimento |  | 5d | 2022-07-21 | 2022-07-27 | 73 | 2022-06-28 | 2022-07-04 | 5d | 16d | 0d | Senior Internal Audit Consultant (T.L.); Scrum Master (T.L.) [20%]; Consultant1 (T.M.) [50%]; Consultant3 (T.M.) [20%]; Consultant2 (T.M.) [50%]; Miguel (P.M.) [10%] | 100h | 2,550 | 2,550 |
| 82 | 1.3.2.2 | Deploy para o ambiente de QA |  | 5d | 2022-07-28 | 2022-08-03 | 81 | 2022-07-05 | 2022-07-11 | 5d | 16d | 0d | Senior Internal Audit Consultant (T.L.); Scrum Master (T.L.) [15%]; Consultant3 (T.M.) [20%]; Consultant1 (T.M.) [50%]; Consultant2 (T.M.) [50%]; Miguel (P.M.) [10%] | 98h | 2,487.5 | 2,487.5 |
| 83 | 1.3.2.3 | Deploy para o ambiente de produção |  | 5d | 2022-08-16 | 2022-08-22 | 82 | 2022-07-12 | 2022-07-18 | 5d | 16d | 0d | Senior Internal Audit Consultant (T.L.); Scrum Master (T.L.) [15%]; Consultant1 (T.M.) [50%]; Consultant3 (T.M.) [20%]; Consultant2 (T.M.) [50%]; Miguel (P.M.) [10%] | 98h | 2,487.5 | 2,487.5 |
| 84 | 1.3.2.4 | Sistema de auditoria concluido | milestone | 0d | 2022-08-22 | 2022-08-22 | 83 | 2022-07-18 | 2022-07-18 | 0d | 16d |  |  |  |  |  |
| 85 | 1.3.3 | **Integração com o sistema R.H.** |  | 11d | 2022-07-21 | 2022-08-16 |  | 2022-06-28 | 2022-07-12 | 11d | 20d |  |  | 53.6h | 1,430 | 1,430 |
| 86 | 1.3.3.1 | Integrar IAM com sistema R.H. |  | 7d | 2022-07-21 | 2022-07-29 | 73 | 2022-06-28 | 2022-07-06 | 7d | 20d | 0d | Scrum Master (T.L.) [20%]; Miguel (P.M.) [10%]; Consultant4 (T.M.) [10%]; Consultant3 (T.M.) [10%] | 28h | 770 | 770 |
| 87 | 1.3.3.2 | Testes de integração |  | 4d | 2022-08-01 | 2022-08-16 | 86 | 2022-07-07 | 2022-07-12 | 4d | 20d | 0d | Consultant4 (T.M.) [10%]; Miguel (P.M.) [10%]; Scrum Master (T.L.) [15%]; Consultant3 (T.M.) [10%] | 14.4h | 390 | 390 |
| 88 | 1.3.3.3 | Corrigir problemas encontrados |  | 4d | 2022-08-01 | 2022-08-16 | 87FF | 2022-07-07 | 2022-07-12 | 4d | 20d | 0d | Consultant4 (T.M.) [10%]; Scrum Master (T.L.) [15%]; Consultant3 (T.M.) [10%] | 11.2h | 270 | 270 |
| 89 | 1.3.3.4 | Integração da API concluido | milestone | 0d | 2022-08-16 | 2022-08-16 | 88 | 2022-07-12 | 2022-07-12 | 0d | 20d |  |  |  |  |  |

| ID | WBS | Task | Type | Duration | Start | Finish | Predecessors | Baseline start | Baseline finish | Baseline duration | Total slack | Resources | Work | Cost | Baseline cost |
| --- | --- | --- | --- | --- | --- | --- | --- | --- | --- | --- | --- | --- | --- | --- | --- |
| 90 | 1.3.4 | **Relatórios e Dashboards** |  | 31d | 2022-07-21 | 2022-09-13 |  | 2022-06-28 | 2022-08-09 | 31d | 0d |  | 370h | 7,382.5 | 7,382.5 |
| 91 | 1.3.4.1 | **Sprint 1** |  | 10d | 2022-07-21 | 2022-08-03 |  | 2022-06-28 | 2022-07-11 | 10d | 0d |  | 62.4h | 1,230 | 1,230 |
| 92 | 1.3.4.1.1 | Sprint Planning |  | 1d | 2022-07-21 | 2022-07-21 | 73 | 2022-06-28 | 2022-06-28 | 1d | 0d | Scrum Master (T.L.) [40%] | 3.2h | 100 | 100 |
| 93 | 1.3.4.1.2 | Sprint Execution |  | 7d | 2022-07-22 | 2022-08-01 | 92 | 2022-06-29 | 2022-07-07 | 7d | 0d | Consultant3 (T.M.) [40%]; Consultant4 (T.M.) [40%] | 44.8h | 840 | 840 |
| 94 | 1.3.4.1.3 | Sprint Review |  | 1d | 2022-08-02 | 2022-08-02 | 93 | 2022-07-08 | 2022-07-08 | 1d | 0d | Scrum Master (T.L.) [20%]; Consultant3 (T.M.) [40%]; Consultant4 (T.M.) [40%] | 8h | 170 | 170 |
| 95 | 1.3.4.1.4 | Sprint Retrospective |  | 1d | 2022-08-03 | 2022-08-03 | 94 | 2022-07-11 | 2022-07-11 | 1d | 0d | Consultant3 (T.M.) [40%]; Consultant4 (T.M.) [40%] | 6.4h | 120 | 120 |
| 96 | 1.3.4.1.5 | Sprint 1 concluído | milestone | 0d | 2022-08-03 | 2022-08-03 | 95 | 2022-07-11 | 2022-07-11 | 0d | 0d |  |  |  |  |
| 97 | 1.3.4.2 | **Sprint 2** |  | 10d | 2022-08-17 | 2022-08-30 |  | 2022-07-13 | 2022-07-26 | 10d | 0d |  | 147.6h | 2,952.5 | 2,952.5 |
| 98 | 1.3.4.2.1 | Sprint Planning |  | 1d | 2022-08-17 | 2022-08-17 | 96FS+1d | 2022-07-13 | 2022-07-13 | 1d | 0d | Scrum Master (T.L.) [85%] | 6.8h | 212.5 | 212.5 |
| 99 | 1.3.4.2.2 | Sprint Execution |  | 7d | 2022-08-18 | 2022-08-26 | 98 | 2022-07-14 | 2022-07-22 | 7d | 0d | Consultant3 (T.M.) [80%]; Consultant4 (T.M.) | 100.8h | 1,890 | 1,890 |
| 100 | 1.3.4.2.3 | Sprint Review |  | 1d | 2022-08-29 | 2022-08-29 | 99 | 2022-07-25 | 2022-07-25 | 1d | 0d | Scrum Master (T.L.); Consultant3 (T.M.); Consultant4 (T.M.) | 24h | 550 | 550 |
| 101 | 1.3.4.2.4 | Sprint Retrospective |  | 1d | 2022-08-30 | 2022-08-30 | 100 | 2022-07-26 | 2022-07-26 | 1d | 0d | Consultant3 (T.M.); Consultant4 (T.M.) | 16h | 300 | 300 |
| 102 | 1.3.4.2.5 | Sprint 2 concluído | milestone | 0d | 2022-08-30 | 2022-08-30 | 101 | 2022-07-26 | 2022-07-26 | 0d | 0d |  |  |  |  |
| 103 | 1.3.4.3 | **Sprint 3** |  | 10d | 2022-08-31 | 2022-09-13 |  | 2022-07-27 | 2022-08-09 | 10d | 0d |  | 160h | 3,200 | 3,200 |
| 104 | 1.3.4.3.1 | Sprint Planning |  | 1d | 2022-08-31 | 2022-08-31 | 102 | 2022-07-27 | 2022-07-27 | 1d | 0d | Scrum Master (T.L.) | 8h | 250 | 250 |
| 105 | 1.3.4.3.2 | Sprint Execution |  | 7d | 2022-09-01 | 2022-09-09 | 104 | 2022-07-28 | 2022-08-05 | 7d | 0d | Consultant3 (T.M.); Consultant4 (T.M.) | 112h | 2,100 | 2,100 |
| 106 | 1.3.4.3.3 | Sprint Review |  | 1d | 2022-09-12 | 2022-09-12 | 105 | 2022-08-08 | 2022-08-08 | 1d | 0d | Scrum Master (T.L.); Consultant3 (T.M.); Consultant4 (T.M.) | 24h | 550 | 550 |
| 107 | 1.3.4.3.4 | Sprint Retrospective |  | 1d | 2022-09-13 | 2022-09-13 | 106 | 2022-08-09 | 2022-08-09 | 1d | 0d | Consultant3 (T.M.); Consultant4 (T.M.) | 16h | 300 | 300 |
| 108 | 1.3.4.3.5 | Sprint 3 concluído | milestone | 0d | 2022-09-13 | 2022-09-13 | 107 | 2022-08-09 | 2022-08-09 | 0d | 0d |  |  |  |  |
| 109 | 1.4 | **Transição** |  | 48d | 2022-09-14 | 2022-11-22 |  | 2022-08-10 | 2022-10-18 | 48d | 0d |  | 1065.6h | 29,255 | 29,255 |
| 110 | 1.4.1 | **Migração dos dados finais** |  | 7d | 2022-09-14 | 2022-09-22 |  | 2022-08-10 | 2022-08-19 | 7d | 0d |  | 79.2h | 2,010 | 2,010 |
| 111 | 1.4.1.1 | Executar migração de dados |  | 2d | 2022-09-14 | 2022-09-15 | 74 | 2022-08-10 | 2022-08-11 | 2d | 0d | Scrum Master (T.L.) [50%]; Consultant3 (T.M.) [50%]; Consultant4 (T.M.) [50%]; Miguel (P.M.) [10%]; Senior Internal Audit Consultant (T.L.) [10%] | 27.2h | 660 | 660 |
| 112 | 1.4.1.2 | Verificar os dados migrados |  | 5d | 2022-09-16 | 2022-09-22 | 111 | 2022-08-12 | 2022-08-19 | 5d | 0d | Scrum Master (T.L.) [30%]; Consultant3 (T.M.) [30%]; Consultant4 (T.M.) [30%]; Miguel (P.M.) [10%]; Senior Internal Audit Consultant (T.L.) [30%] | 52h | 1,350 | 1,350 |
| 113 | 1.4.1.3 | Migração de dados concluída | milestone | 0d | 2022-09-22 | 2022-09-22 | 112 | 2022-08-19 | 2022-08-19 | 0d | 0d |  |  |  |  |

| ID | WBS | Task | Type | Duration | Start | Finish | Predecessors | Baseline start | Baseline finish | Baseline duration | Total slack | Resources | Work | Cost | Baseline cost |
| --- | --- | --- | --- | --- | --- | --- | --- | --- | --- | --- | --- | --- | --- | --- | --- |
| 114 | 1.4.2 | **Instalação do software** |  | 7d | 2022-09-14 | 2022-09-22 |  | 2022-08-10 | 2022-08-19 | 7d | 0d |  | 95.2h | 2,390 | 2,390 |
| 115 | 1.4.2.1 | Instalar sistema de informação |  | 3d | 2022-09-14 | 2022-09-16 | 74 | 2022-08-10 | 2022-08-12 | 3d | 0d | Scrum Master (T.L.) [50%]; Consultant3 (T.M.) [50%]; Consultant4 (T.M.) [50%]; Miguel (P.M.) [10%]; Senior Internal Audit Consultant (T.L.) [10%] | 40.8h | 990 | 990 |
| 116 | 1.4.2.2 | Verificar sistema de informação |  | 4d | 2022-09-19 | 2022-09-22 | 115 | 2022-08-16 | 2022-08-19 | 4d | 0d | Scrum Master (T.L.) [40%]; Consultant3 (T.M.) [40%]; Consultant4 (T.M.) [40%]; Miguel (P.M.) [10%]; Senior Internal Audit Consultant (T.L.) [40%] | 54.4h | 1,400 | 1,400 |
| 117 | 1.4.2.3 | Intalação do software concluida | milestone | 0d | 2022-09-22 | 2022-09-22 | 116 | 2022-08-19 | 2022-08-19 | 0d | 0d |  |  |  |  |
| 118 | 1.4.3 | **Testes de Integração** |  | 7d | 2022-09-23 | 2022-10-03 |  | 2022-08-22 | 2022-08-30 | 7d | 0d |  | 179.2h | 4,235 | 4,235 |
| 119 | 1.4.3.1 | Testes de integração de todos os módulos |  | 7d | 2022-09-23 | 2022-10-03 | 117, 113 | 2022-08-22 | 2022-08-30 | 7d | 0d | Scrum Master (T.L.) [50%]; Consultant3 (T.M.) [50%]; Consultant4 (T.M.) [50%]; Miguel (P.M.) [10%]; Senior Internal Audit Consultant (T.L.) [10%] | 95.2h | 2,310 | 2,310 |
| 120 | 1.4.3.2 | Correção de problemas encontrados |  | 7d | 2022-09-23 | 2022-10-03 | 119FF | 2022-08-22 | 2022-08-30 | 7d | 0d | Scrum Master (T.L.) [50%]; Consultant3 (T.M.) [50%]; Consultant4 (T.M.) [50%] | 84h | 1,925 | 1,925 |
| 121 | 1.4.3.3 | Testes de Integração concluídos | milestone | 0d | 2022-10-03 | 2022-10-03 | 120 | 2022-08-30 | 2022-08-30 | 0d | 0d |  |  |  |  |
| 122 | 1.4.4 | **Testes de sistema** |  | 7d | 2022-10-04 | 2022-10-13 |  | 2022-08-31 | 2022-09-08 | 7d | 0d |  | 173.6h | 4,060 | 4,060 |
| 123 | 1.4.4.1 | Testes de performance e segurança |  | 7d | 2022-10-04 | 2022-10-13 | 121 | 2022-08-31 | 2022-09-08 | 7d | 0d | Scrum Master (T.L.) [50%]; Consultant3 (T.M.) [50%]; Consultant4 (T.M.) [50%]; Miguel (P.M.) [10%] | 89.6h | 2,135 | 2,135 |
| 124 | 1.4.4.2 | Correção de problemas encontrados |  | 7d | 2022-10-04 | 2022-10-13 | 123FF | 2022-08-31 | 2022-09-08 | 7d | 0d | Scrum Master (T.L.) [50%]; Consultant3 (T.M.) [50%]; Consultant4 (T.M.) [50%] | 84h | 1,925 | 1,925 |
| 125 | 1.4.4.3 | Testes de sistema concluidos | milestone | 0d | 2022-10-13 | 2022-10-13 | 124 | 2022-09-08 | 2022-09-08 | 0d | 0d |  |  |  |  |
| 126 | 1.4.5 | **Testes de aceitação** |  | 7d | 2022-10-14 | 2022-10-24 |  | 2022-09-09 | 2022-09-19 | 7d | 0d |  | 173.6h | 4,060 | 4,060 |
| 127 | 1.4.5.1 | Testes feitos sobre a utilização do sistema |  | 7d | 2022-10-14 | 2022-10-24 | 125 | 2022-09-09 | 2022-09-19 | 7d | 0d | Scrum Master (T.L.) [50%]; Consultant3 (T.M.) [50%]; Consultant4 (T.M.) [50%]; Miguel (P.M.) [10%] | 89.6h | 2,135 | 2,135 |
| 128 | 1.4.5.2 | Correção de problemas encontrados |  | 7d | 2022-10-14 | 2022-10-24 | 127FF | 2022-09-09 | 2022-09-19 | 7d | 0d | Scrum Master (T.L.) [50%]; Consultant3 (T.M.) [50%]; Consultant4 (T.M.) [50%] | 84h | 1,925 | 1,925 |
| 129 | 1.4.5.3 | Testes de aceitação concluídos | milestone | 0d | 2022-10-24 | 2022-10-24 | 128 | 2022-09-19 | 2022-09-19 | 0d | 0d |  |  |  |  |
| 130 | 1.4.6 | **Treino de K.U. & Pilot** |  | 41d | 2022-09-23 | 2022-11-22 |  | 2022-08-22 | 2022-10-18 | 41d | 7d |  | 364.8h | 12,500 | 12,500 |
| 131 | 1.4.6.1 | Treino de key-users |  | 4d | 2022-09-23 | 2022-09-28 | 117 | 2022-08-22 | 2022-08-25 | 4d | 44d | Senior Internal Audit Consultant (T.L.) [90%]; Miguel (P.M.) [50%] | 44.8h | 1,500 | 1,500 |
| 132 | 1.4.6.2 | One-month Pilot |  | 1mo | 2022-10-25 | 2022-11-22 | 129 | 2022-09-20 | 2022-10-18 | 1mo | 0d | Miguel (P.M.); Senior Internal Audit Consultant (T.L.) | 320h | 11,000 | 11,000 |
| 133 | 1.4.6.3 | Treino de K.U. e Pilot concluído | milestone | 0d | 2022-11-22 | 2022-11-22 | 132 | 2022-10-18 | 2022-10-18 | 0d | 0d |  |  |  |  |
